# Cronograma Villadent - Sistema web de agendamiento y recordatorio de citas

Schedule from MS Project XML, 2026-09-03 to 2026-11-19.

## Calendars

- Standard: Mon-Fri 08:00-12:00, 13:00-17:00; Sat-Sun off.

## Resources

| Resource | Group |
| --- | --- |
| No Asignado |  |
| Diego Andrés Becerra Bonilla | Project Manager y QA/Tester |
| Yenderson Josué Rangel Martínez | DevOps y Backend Developer |
| Jesús David Leal Espinel | Software Architect y Frontend Developer |

## Schedule

| ID | WBS | Task | Type | Duration | Start | Finish | Predecessors | Resources |
| --- | --- | --- | --- | --- | --- | --- | --- | --- |
| 1 | 1 | **Planificación de requisitos (fase RAD 1)** |  | 9d | 2026-09-03 | 2026-09-15 |  |  |
| 2 | 1.1 | Levantamiento de requisitos con Villadent (auxiliar y odontóloga) |  | 3d | 2026-09-03 | 2026-09-07 |  | Diego Andrés Becerra Bonilla; Yenderson Josué Rangel Martínez; Jesús David Leal Espinel |
| 3 | 1.2 | Especificación de requisitos (SRS): RF01 a RF10 y RNF01 a RNF05 |  | 4d | 2026-09-08 | 2026-09-11 | 2 | Diego Andrés Becerra Bonilla |
| 4 | 1.3 | Modelado de casos de uso CU-01 a CU-10 |  | 4d | 2026-09-08 | 2026-09-11 | 2 | Jesús David Leal Espinel; Diego Andrés Becerra Bonilla |
| 5 | 1.4 | Validación del SRS con Villadent |  | 2d | 2026-09-14 | 2026-09-15 | 3, 4 | Diego Andrés Becerra Bonilla |
| 6 | 2 | **Diseño con el usuario (fase RAD 2)** |  | 11d | 2026-09-16 | 2026-09-30 |  |  |
| 7 | 2.1 | Arquitectura: Angular, Spring Boot hexagonal y PostgreSQL; despliegue en Vercel, Render y Neon |  | 3d | 2026-09-16 | 2026-09-18 | 5 | Jesús David Leal Espinel; Yenderson Josué Rangel Martínez |
| 8 | 2.2 | Modelo de datos: odontólogos, procedimientos, horarios, pacientes, citas y personal |  | 4d | 2026-09-16 | 2026-09-21 | 5 | Yenderson Josué Rangel Martínez |
| 9 | 2.3 | Plan de pruebas (ISO/IEC/IEEE 29119-3) |  | 4d | 2026-09-16 | 2026-09-21 | 5 | Diego Andrés Becerra Bonilla |
| 10 | 2.4 | Prototipo Angular del flujo público de agendamiento y de la agenda del personal |  | 5d | 2026-09-22 | 2026-09-28 | 7, 8 | Jesús David Leal Espinel |
| 11 | 2.5 | Validación del prototipo con la auxiliar y la odontóloga |  | 2d | 2026-09-29 | 2026-09-30 | 9, 10 | Diego Andrés Becerra Bonilla; Jesús David Leal Espinel |
| 12 | 3 | **Construcción por ciclos de timeboxing (fase RAD 3)** |  | 30d | 2026-10-01 | 2026-11-11 |  |  |
| 13 | 3.1 | Entorno de desarrollo: Docker Compose, PostgreSQL y migraciones Flyway |  | 3d | 2026-10-01 | 2026-10-05 | 11 | Yenderson Josué Rangel Martínez |
| 14 | 3.2 | Ciclo 1: acceso por rol, datos del paciente, disponibilidad y agendas por odontólogo (RF09, RF02, RF01, RF03) con sus pruebas |  | 8d | 2026-10-06 | 2026-10-15 | 13 | Yenderson Josué Rangel Martínez; Jesús David Leal Espinel; Diego Andrés Becerra Bonilla |
| 15 | 3.3 | Ciclo 2: duración por procedimiento, agendamiento del paciente y agenda centralizada (RF04, RF07, RF08) con sus pruebas |  | 5d | 2026-10-16 | 2026-10-22 | 14 | Yenderson Josué Rangel Martínez; Jesús David Leal Espinel; Diego Andrés Becerra Bonilla |
| 16 | 3.4 | Ciclo 3: recordatorios por WhatsApp y confirmación, cancelación y reprogramación (RF05, RF06) con sus pruebas |  | 6d | 2026-10-23 | 2026-10-30 | 15 | Yenderson Josué Rangel Martínez; Jesús David Leal Espinel; Diego Andrés Becerra Bonilla |
| 17 | 3.5 | Ciclo 4: reportes administrativos (RF10) con sus pruebas |  | 4d | 2026-11-02 | 2026-11-05 | 16 | Yenderson Josué Rangel Martínez; Jesús David Leal Espinel; Diego Andrés Becerra Bonilla |
| 18 | 3.6 | Integración del frontend con la API |  | 4d | 2026-11-06 | 2026-11-11 | 17 | Jesús David Leal Espinel; Yenderson Josué Rangel Martínez |
| 19 | 4 | **Pruebas y transición (fase RAD 4)** |  | 6d | 2026-11-12 | 2026-11-19 |  |  |
| 20 | 4.1 | Pruebas de sistema y no funcionales (RNF01 a RNF04) |  | 3d | 2026-11-12 | 2026-11-16 | 18 | Diego Andrés Becerra Bonilla; Yenderson Josué Rangel Martínez |
| 21 | 4.2 | Pruebas de aceptación con la auxiliar y la odontóloga (UAT y piloto) |  | 2d | 2026-11-12 | 2026-11-13 | 18 | Diego Andrés Becerra Bonilla; Jesús David Leal Espinel |
| 22 | 4.3 | Corrección de defectos y regresión |  | 2d | 2026-11-17 | 2026-11-18 | 20, 21 | Yenderson Josué Rangel Martínez; Jesús David Leal Espinel |
| 23 | 4.4 | Despliegue en Vercel, Render y Neon e informe de resultados |  | 1d | 2026-11-19 | 2026-11-19 | 22 | Yenderson Josué Rangel Martínez; Diego Andrés Becerra Bonilla |
| 24 | 4.5 | Entrega final del proyecto | milestone | 0d | 2026-11-19 | 2026-11-19 | 23 |  |
